Schedule from MS Project, 2014-06-03 to 2014-08-10, status date 2014-06-03, 13 hours a day, costs in $, A marks actual dates.
SPecialiST RePack

## Calendars

- VisuScreen: Mon-Thu 08:00-21:00; Fri off; Sat-Sun 08:00-21:00.

## Resources

| Resource | Rate |
| --- | --- |
| Anton |  |
| Nikitin |  |
| Kholodovitch | 20 |
| Wedeko |  |
| Orchid |  |
| Orschit |  |

## Schedule

| ID | WBS | Task | Type | Duration | Start | Finish | Predecessors | Complete | Total slack | Resources | Work | Cost |
| --- | --- | --- | --- | --- | --- | --- | --- | --- | --- | --- | --- | --- |
| 1 | 1 | Start of development | milestone | 0d | 2014-06-03 A | 2014-06-03 A |  | 100% |  |  |  |  |
| 2 | 2 | Discussion about work plan |  | 3.08d | 2014-06-03 | 2014-06-06 | 1 |  | 49.54d | Orschit; Nikitin; Wedeko | 90h |  |
| 3 | 3 | **Prototypes** |  | 28d? | 2014-06-03 | 2014-07-06 | 1 |  | 0d |  | 364h | 7,280 |
| 4 | 3.1 | **HTML5 display prototypes** |  | 6d | 2014-06-03 | 2014-06-10 |  |  | 0d | Kholodovitch | 78h | 1,560 |
| 5 | 3.1.1 | **Prototype: application with included WebChromeClient** |  | 2d | 2014-06-03 | 2014-06-05 |  |  | 0d |  |  |  |
| 6 | 3.1.1.1 | research about all implementations |  | 0.5d | 2014-06-03 | 2014-06-03 |  |  | 0d |  |  |  |
| 7 | 3.1.1.2 | test different html5 renderers |  | 1d | 2014-06-03 | 2014-06-04 | 6 |  | 0d |  |  |  |
| 8 | 3.1.1.3 | check chromium renderer |  | 0.5d | 2014-06-04 | 2014-06-05 | 7 |  | 0d |  |  |  |
| 9 | 3.1.2 | **Prototype: implement all needed transitions** |  | 4d | 2014-06-05 | 2014-06-10 | 5 |  | 0d |  |  |  |
| 10 | 3.1.2.1 | research about implemented transition effects |  | 0.5d | 2014-06-05 | 2014-06-05 |  |  | 0d |  |  |  |
| 11 | 3.1.2.2 | implement mask fade effects |  | 1.5d | 2014-06-05 | 2014-06-08 | 10 |  | 0d |  |  |  |
| 12 | 3.1.2.3 | implement 3d transitions |  | 1d | 2014-06-08 | 2014-06-09 | 11 |  | 0d |  |  |  |
| 13 | 3.1.2.4 | implement object-animations |  | 0.5d | 2014-06-09 | 2014-06-09 | 12 |  | 0d |  |  |  |
| 14 | 3.1.2.5 | testing performance |  | 0.5d | 2014-06-09 | 2014-06-10 | 13 |  | 0d |  |  |  |
| 15 | 3.2 | Ready HTML5 display prototypes | milestone | 0d | 2014-06-10 | 2014-06-10 | 4 |  | 0d |  |  |  |
| 16 | 3.3 | **Transfeding and building presentations prototypes** |  | 16d? | 2014-06-10 | 2014-06-29 | 15 |  | 0d | Kholodovitch | 208h | 4,160 |
| 17 | 3.3.1 | Prototype: schedule |  | 4d | 2014-06-10 | 2014-06-15 |  |  | 0d |  |  |  |
| 18 | 3.3.2 | analyse logic of DevExpress schedule | manual | 1d? | 2014-06-10 | 2014-06-11 |  |  |  |  |  |  |
| 19 | 3.3.3 | create scheme of json schedule | manual | 1d? | 2014-06-10 | 2014-06-11 |  |  |  |  |  |  |
| 20 | 3.3.4 | try to process manually | manual | 1d? | 2014-06-10 | 2014-06-11 |  |  |  |  |  |  |
| 21 | 3.3.5 | **Prototype: building html+js from json-presentations** |  | 4d | 2014-06-15 | 2014-06-19 | 17 |  | 0d |  |  |  |
| 22 | 3.3.5.1 | creating json description of presentation strcture |  | 1d | 2014-06-15 | 2014-06-16 |  |  | 0d |  |  |  |
| 23 | 3.3.5.2 | implement module logic of scene and transition (switching) |  | 1.5d | 2014-06-16 | 2014-06-17 | 22 |  | 0d |  |  |  |
| 24 | 3.3.5.3 | generating html5 code by json |  | 1d | 2014-06-17 | 2014-06-18 | 23 |  | 0d |  |  |  |
| 25 | 3.3.5.4 | testing |  | 0.5d | 2014-06-18 | 2014-06-19 | 24 |  | 0d |  |  |  |

| ID | WBS | Task | Type | Duration | Start | Finish | Predecessors | Total slack | Resources | Work | Cost |
| --- | --- | --- | --- | --- | --- | --- | --- | --- | --- | --- | --- |
| 26 | 3.3.6 | **Prototype: json-server** |  | 4d | 2014-06-19 | 2014-06-24 | 21 | 0d |  |  |  |
| 27 | 3.3.6.1 | research and experiments with exists implementations JSON-services on C# |  | 1.5d | 2014-06-19 | 2014-06-21 |  | 0d |  |  |  |
| 28 | 3.3.6.2 | implement test service API |  | 0.5d | 2014-06-21 | 2014-06-22 | 27 | 0d |  |  |  |
| 29 | 3.3.6.3 | implement test logic for transter data to client |  | 1d | 2014-06-22 | 2014-06-23 | 28 | 0d |  |  |  |
| 30 | 3.3.6.4 | testing work with client |  | 1d | 2014-06-23 | 2014-06-24 | 29 | 0d |  |  |  |
| 31 | 3.3.7 | Prototype: async calling network work with sesrver |  | 4d | 2014-06-24 | 2014-06-29 | 26 | 0d |  |  |  |
| 32 | 3.4 | Ready transfeding and building presentations prototypes | milestone | 0d | 2014-06-29 | 2014-06-29 | 16 | 0d |  |  |  |
| 33 | 3.5 | **Local managment content prototypes** |  | 6d | 2014-06-29 | 2014-07-06 | 32 | 0d | Kholodovitch | 78h | 1,560 |
| 34 | 3.5.1 | Prototype: work with local storage |  | 2d | 2014-06-29 | 2014-07-01 |  | 0d |  |  |  |
| 35 | 3.5.2 | Prototype: unloading unneded scenes (optimize reosurces) |  | 3d | 2014-07-01 | 2014-07-05 | 34 | 0d |  |  |  |
| 36 | 3.5.3 | **Prototype: screenshoting** |  | 1d | 2014-07-05 | 2014-07-06 | 35 | 0d |  |  |  |
| 37 | 3.5.3.1 | research and experiments |  | 0.75d | 2014-07-05 | 2014-07-05 |  | 0d |  |  |  |
| 38 | 3.5.3.2 | testing performance |  | 0.25d | 2014-07-05 | 2014-07-06 | 37 | 0d |  |  |  |
| 39 | 4 | Ready all prototypes | milestone | 0d | 2014-07-06 | 2014-07-06 | 3 | 0d |  |  |  |
| 40 | 5 | **Pre-alpha version** |  | 12d | 2014-07-06 | 2014-07-20 | 39 | 0d | Kholodovitch | 156h | 3,120 |
| 41 | 5.1 | Implement converting XAML-presentations to primitive format |  | 8d | 2014-07-06 | 2014-07-15 |  | 0d |  |  |  |
| 42 | 5.2 | Offline player alpha without animations |  | 4d | 2014-07-15 | 2014-07-20 | 41 | 0d |  |  |  |
| 43 | 6 | Ready pre-alpha version | milestone | 0d | 2014-07-20 | 2014-07-20 | 40 | 0d |  |  |  |
| 44 | 7 | **Alpha version** |  | 6d | 2014-07-20 | 2014-07-27 | 43 | 0d | Kholodovitch | 78h | 1,560 |
| 45 | 7.1 | Implement HTTP-JSON player-server connetction, transfering content |  | 3d | 2014-07-20 | 2014-07-23 |  | 0d |  |  |  |
| 46 | 7.2 | Saving content to local storage |  | 1.5d | 2014-07-23 | 2014-07-24 | 45 | 0d |  |  |  |
| 47 | 7.3 | Check transferring huge video, managment of downloaded content |  | 1.5d | 2014-07-24 | 2014-07-27 | 46 | 0d |  |  |  |
| 48 | 8 | Ready alpha version | milestone | 0d | 2014-07-27 | 2014-07-27 | 44 | 0d |  |  |  |
| 49 | 9 | **Developing beta-version** |  | 6d | 2014-07-27 | 2014-08-03 | 48 | 0d | Kholodovitch | 117h | 1,560 |
| 50 | 9.1 | Transfering information about type of player |  | 1d | 2014-07-27 | 2014-07-28 |  | 0d |  |  |  |
| 51 | 9.2 | Change client's GUI for prevent transferring unsupported content |  | 2d | 2014-07-28 | 2014-07-30 | 50 | 0d |  |  |  |
| 52 | 9.3 | Other small logic and bug-fixing |  | 3d | 2014-07-30 | 2014-08-03 | 51 | 0d |  |  |  |
| 53 | 9.4 | Testing and creating bug-reports |  | 3d | 2014-07-30 | 2014-08-03 | 51 | 0d | Wedeko | 39h |  |
| 54 | 10 | Ready beta version | milestone | 0d | 2014-08-03 | 2014-08-03 | 49 | 0d |  |  |  |

| ID | WBS | Task | Type | Duration | Start | Finish | Predecessors | Total slack | Resources | Work | Cost |
| --- | --- | --- | --- | --- | --- | --- | --- | --- | --- | --- | --- |
| 55 | 11 | **Release version** |  | 6d | 2014-08-03 | 2014-08-10 | 54 | 0d | Kholodovitch | 130h | 1,560 |
| 56 | 11.1 | Testing and bug-fixing |  | 6d | 2014-08-03 | 2014-08-10 |  | 0d |  |  |  |
| 57 | 11.2 | Testing and creating bug-reports |  | 4d | 2014-08-03 | 2014-08-07 |  | 2d | Wedeko | 52h |  |
| 58 | 12 | Ready release version | milestone | 0d | 2014-08-10 | 2014-08-10 | 55 | 0d |  |  |  |
